%%{ init: { 'theme': 'dark' } }%%
gantt
    title PGL Luxury Buyer Finder — 6 Week Roadmap
    dateFormat  YYYY-MM-DD
    axisFormat  %b %d

    section Phase 1: Foundation
    Database Schema + RLS Policies       :p1a, 2026-02-10, 4d
    Multi-Tenant Middleware               :p1b, after p1a, 3d
    Supabase Auth + Roles                 :p1c, after p1a, 4d
    Super Admin Panel                     :p1d, after p1b, 4d
    UI Shell + Dark Theme                 :p1e, after p1a, 5d
    Tenant Branding System                :p1f, after p1e, 2d
    Phase 1 Verification                  :milestone, p1m, after p1d p1f, 0d

    section Phase 2: Persona + Search + Lists
    Persona Builder UI                    :p2a, after p1m, 4d
    Apollo.io API Integration             :p2b, after p1m, 5d
    Search Results Table + Pagination     :p2c, after p2b, 4d
    Rate Limiting (Upstash Redis)         :p2d, after p2b, 2d
    List Management CRUD                  :p2e, after p1m, 5d
    List Member Status + Notes            :p2f, after p2e, 3d
    Starter Personas Seeding              :p2g, after p2a, 2d
    Phase 2 Verification                  :milestone, p2m, after p2c p2f p2g, 0d

    section Phase 3: Enrich + Ship
    Inngest Setup + Enrichment Pipeline   :p3a, after p2m, 3d
    ContactOut Integration                :p3b, after p3a, 3d
    Exa.ai Integration                    :p3c, after p3a, 4d
    SEC EDGAR Parser                      :p3d, after p3a, 5d
    Claude AI Summaries                   :p3e, after p3b, 3d
    Profile View UI                       :p3f, after p3e, 4d
    CSV Export (Streaming)                :p3g, after p2m, 3d
    Activity Logging                      :p3h, after p2m, 3d
    Phase 3 Verification                  :milestone, p3m, after p3f p3g p3h, 0d
